# infinity-beer

Schedule from ProjectLibre, 2022-01-21 to 2022-09-21.

## Calendars

- Standard: Mon-Fri 08:00-12:00, 13:00-17:00; Sat-Sun off. Exceptions (off unless hours are given): 2022-02-28 to 2022-03-02, 2022-03-31 to 2022-04-01, 2022-04-14 to 2022-04-15, 2022-04-20 to 2022-04-21, 2022-04-30 to 2022-05-01, 2022-05-09 to 2022-05-10, 2022-06-15 to 2022-06-16.

## Resources

| Resource | Rate |
| --- | --- |
| Não atribuído |  |
| Vinícius Bandeira | 50 |
| Eduardo Candido | 50 |
| Data Center | 5 |
| Programador | 40 |
| Geladeira | 2500 |
| Project Owner |  |
| Dispositivos IOT | 350 |
| Montador do Protótipo | 40 |

## Schedule

| ID | WBS | Task | Duration | Start | Finish | Predecessors |
| --- | --- | --- | --- | --- | --- | --- |
| 1 | 1 | **Criação Cervejeira Automatizada** | 167d | 2022-01-21 | 2022-09-21 |  |
| 2 | 1.1 | **1 - Definição do Projeto** | 5d | 2022-01-21 | 2022-01-27 |  |
| 3 | 1.1.1 | Desenho do escopo do projeto | 3d | 2022-01-21 | 2022-01-25 |  |
| 4 | 1.1.2 | Levantamento de recursos | 1d | 2022-01-26 | 2022-01-26 | 3 |
| 5 | 1.1.3 | Definição de tarefas e prazos | 1d | 2022-01-27 | 2022-01-27 | 4 |
| 6 | 1.2 | **2 - Implementação** | 145d | 2022-01-28 | 2022-08-29 |  |
| 7 | 1.2.1 | Aquisição de Cervejeiras e materiais de IOT | 7d | 2022-01-28 | 2022-02-07 | 5 |
| 8 | 1.2.2 | Aluguel de Data Centers | 1d | 2022-02-08 | 2022-02-08 | 7 |
| 9 | 1.2.3 | Montagem do protótipo | 7d | 2022-02-09 | 2022-02-17 | 8 |
| 10 | 1.2.4 | Desenvolvimento do Back-end | 60d | 2022-02-18 | 2022-05-20 | 9 |
| 11 | 1.2.5 | Desenvolvimento do Front-end | 60d | 2022-05-23 | 2022-08-15 | 10 |
| 12 | 1.2.6 | Treinamento da IA | 7d | 2022-08-16 | 2022-08-24 | 11 |
| 13 | 1.2.7 | Testes internos de precisão | 3d | 2022-08-25 | 2022-08-29 | 12 |
| 14 | 1.3 | **3 - Implantação** | 17d | 2022-08-30 | 2022-09-21 |  |
| 15 | 1.3.1 | Documentação | 2d | 2022-08-30 | 2022-08-31 | 13 |
| 16 | 1.3.2 | Publicação do Software | 1d | 2022-09-01 | 2022-09-01 | 15 |
| 17 | 1.3.3 | Fabricação em Larga Escala | 14d | 2022-09-02 | 2022-09-21 | 16 |
